# CSM 4.0

Schedule from MS Project, 2007-01-16 to 2007-07-23, A marks actual dates.
NCI

## Calendars

- Standard: Mon-Fri 08:00-12:00, 13:00-17:00; Sat-Sun off. Exceptions (off unless hours are given): 2007-02-05 to 2007-02-07.

## Resources

| Resource |
| --- |
| Kunal |
| Vijay |
| Charles |
| Avinash |
| Steve |
| KunalKunalK |
| QA |
| Kuanl |
| caGRID |
| Satish |
| Kunal/Satish |

## Schedule

| ID | WBS | Task | Type | Duration | Start | Finish | Predecessors | Complete | Remaining | Baseline start | Baseline finish | Baseline duration | Total slack | Constraint | Resources | Work | Actual work |
| --- | --- | --- | --- | --- | --- | --- | --- | --- | --- | --- | --- | --- | --- | --- | --- | --- | --- |
| 1 | 1 | **CSM v4.0** |  | 132d? | 2007-01-16 A | 2007-07-23 |  | 61% | 51.59d? | 2007-01-16 | 2007-07-23 | 132d? | 0d |  |  | 2758.8h | 1761.29h |
| 2 | 1.1 | **Inception** |  | 3d | 2007-01-19 A | 2007-01-23 A |  | 100% |  | 2007-01-19 | 2007-01-23 | 3d |  |  |  | 8h | 8h |
| 3 | 1.1.1 | 4.0 Kickoff meeting | milestone | 0d | 2007-01-19 A | 2007-01-19 A |  | 100% |  | 2007-01-19 | 2007-01-19 | 0d |  | start no earlier than 2007-01-19 | Kunal; Charles; Steve |  |  |
| 4 | 1.1.2 | Create initial task plan |  | 1d | 2007-01-23 A | 2007-01-23 A |  | 100% |  | 2007-01-23 | 2007-01-23 | 1d |  |  | Kunal | 8h | 8h |
| 5 | 1.2 | **Support** |  | 27d? | 2007-01-23 A | 2007-03-05 |  | 25% | 20.25d? | 2007-01-23 | 2007-03-05 | 27d? | 100d |  | Kunal [20%] | 168h | 116.49h |
| 6 | 1.2.1 | Application Support |  | 27d? | 2007-01-23 | 2007-03-05 |  |  |  | 2007-01-23 | 2007-03-05 | 27d? | 100d | start no earlier than 2007-01-23 | Kunal [10%] | 21.6h |  |
| 7 | 1.2.2 | Support for caBIG Activities |  | 9d? | 2007-01-23 A | 2007-02-02 A |  | 100% |  | 2007-01-23 | 2007-02-02 | 9d? |  | start no earlier than 2007-01-23 | Kunal [10%] | 7.2h | 7.2h |
| 8 | 1.2.3 | Attend caBIG Conference | milestone | 0d? | 2007-02-05 A | 2007-02-07 A | 7 | 100% |  | 2007-02-05 | 2007-02-07 | 0d? |  | start no earlier than 2007-02-05 | Kunal [42.1%]; Vijay [42.1%]; Charles [42.1%]; Steve [42.1%] | 96h | 96h |
| 9 | 1.3 | **Eloboration** |  | 132d? | 2007-01-16 A | 2007-07-23 |  | 65% | 46.01d? | 2007-01-16 | 2007-07-23 | 132d? | 0d |  |  | 2582.8h | 1636.8h |
| 10 | 1.3.1 | **Requiements Gathering** |  | 6.25d | 2007-01-19 A | 2007-01-29 |  | 91% | 0.57d | 2007-01-19 | 2007-01-29 | 6.25d | 122.75d |  |  | 22h | 20h |
| 11 | 1.3.1.1 | caCORE User's Meeting + Preperation |  | 1.25d | 2007-01-19 A | 2007-01-22 A |  | 100% |  | 2007-01-19 | 2007-01-22 | 1.25d |  | start no earlier than 2007-01-19 | Kunal | 10h | 10h |
| 12 | 1.3.1.2 | Requirements Meeting (BRN/caArray) |  | 0.25d | 2007-01-24 | 2007-01-24 |  |  |  | 2007-01-24 | 2007-01-24 | 0.25d | 125.75d | start no earlier than 2007-01-24 | Kunal | 2h |  |
| 13 | 1.3.1.3 | Requirements meeting (iSPY, Rembrandt, CGEMS) |  | 0.25d | 2007-01-25 A | 2007-01-25 A |  | 100% |  | 2007-01-25 | 2007-01-25 | 0.25d |  | start no earlier than 2007-01-25 | Kunal | 2h | 2h |
| 14 | 1.3.1.4 | Requirements meeting (caCORE, SDK) |  | 0.25d | 2007-01-25 A | 2007-01-25 A |  | 100% |  | 2007-01-25 | 2007-01-25 | 0.25d |  | start no earlier than 2007-01-25 | Kunal | 2h | 2h |
| 15 | 1.3.1.5 | Requirements meeting (SPORES, caMOD) |  | 0.25d | 2007-01-26 A | 2007-01-26 A |  | 100% |  | 2007-01-26 | 2007-01-26 | 0.25d |  | start no earlier than 2007-01-26 | Kunal | 2h | 2h |
| 16 | 1.3.1.6 | Requirements meeting (BMS) |  | 0.25d | 2007-01-26 A | 2007-01-26 A |  | 100% |  | 2007-01-26 | 2007-01-26 | 0.25d |  | start no earlier than 2007-01-26 | Kunal | 2h | 2h |
| 17 | 1.3.1.7 | Requirements meeting (caGRID) |  | 0.25d | 2007-01-29 A | 2007-01-29 A |  | 100% |  | 2007-01-29 | 2007-01-29 | 0.25d |  | start no earlier than 2007-01-29 | Kunal | 2h | 2h |
| 18 | 1.3.2 | **Scope Document** |  | 8d | 2007-01-26 A | 2007-02-09 A |  | 100% |  | 2007-01-26 | 2007-02-09 | 8d |  |  |  | 96h | 96h |
| 19 | 1.3.2.1 | Prepare list of scope items on gforge |  | 1d | 2007-01-26 A | 2007-01-26 A |  | 100% |  | 2007-01-26 | 2007-01-26 | 1d |  | start no earlier than 2007-01-26 | Kunal | 8h | 8h |
| 20 | 1.3.2.2 | Draft scope document |  | 3d | 2007-01-29 A | 2007-01-31 A | 19 | 100% |  | 2007-01-29 | 2007-01-31 | 3d |  |  | Charles | 24h | 24h |
| 21 | 1.3.2.3 | Estimate LOE for Itertion 1 & 2 scope items |  | 1d | 2007-02-01 A | 2007-02-01 A | 20 | 100% |  | 2007-02-01 | 2007-02-01 | 1d |  |  | Kunal | 8h | 8h |
| 22 | 1.3.2.4 | Prepare risk list |  | 1d | 2007-02-02 A | 2007-02-02 A | 21 | 100% |  | 2007-02-02 | 2007-02-02 | 1d |  |  | Charles; Kunal | 16h | 16h |
| 23 | 1.3.2.5 | NCICB Review of scope document |  | 2d | 2007-02-01 A | 2007-02-05 A | 20 | 100% |  | 2007-02-01 | 2007-02-05 | 2d |  |  | Avinash [150%] | 24h | 24h |
| 24 | 1.3.2.6 | Revise scope document |  | 2d | 2007-02-08 A | 2007-02-09 A | 23, 8 | 100% |  | 2007-02-08 | 2007-02-09 | 2d |  |  | Kunal | 16h | 16h |
| 25 | 1.3.2.7 | Finalize Scope | milestone | 0d | 2007-02-09 A | 2007-02-09 A | 24 | 100% |  | 2007-02-09 | 2007-02-09 | 0d |  |  | Kunal; Charles |  |  |
| 26 | 1.3.5 | Revise task plan |  | 1d? | 2007-01-23 A | 2007-01-23 A |  | 100% |  | 2007-01-23 | 2007-01-23 | 1d? |  |  | Charles | 8h | 8h |

| ID | WBS | Task | Duration | Start | Finish | Predecessors | Complete | Remaining | Baseline start | Baseline finish | Baseline duration | Total slack | Constraint | Resources | Work | Actual work |
| --- | --- | --- | --- | --- | --- | --- | --- | --- | --- | --- | --- | --- | --- | --- | --- | --- |
| 27 | 1.3.6 | **Construction** | 127.5d | 2007-01-16 A | 2007-07-17 |  | 70% | 38.62d | 2007-01-16 | 2007-07-17 | 127.5d | 4.5d |  |  | 2056.8h | 1512.8h |
| 28 | 1.3.6.1 | **Iteration 1** | 48d | 2007-01-16 A | 2007-03-27 A |  | 100% |  | 2007-01-16 | 2007-03-27 | 48d |  |  |  | 504.8h | 504.8h |
| 29 | 1.3.6.1.1 | CSM Application Developers Guide Update | 5d | 2007-01-16 A | 2007-01-22 A |  | 100% |  | 2007-01-16 | 2007-01-22 | 5d |  | start no earlier than 2007-01-16 | Vijay | 40h | 40h |
| 30 | 1.3.6.1.2 | Regression Junit Development | 8d | 2007-01-23 A | 2007-02-01 A | 29 | 100% |  | 2007-01-23 | 2007-02-01 | 8d |  |  | Vijay | 64h | 64h |
| 31 | 1.3.4.1.3 | CSM Bug Fixes (GF#3794) | 6d | 2007-02-02 A | 2007-02-14 A | 30 | 100% |  | 2007-02-02 | 2007-02-14 | 6d |  |  | Vijay | 48h | 48h |
| 32 | 1.3.4.1.4 | **CSM caGRID Integration** | 20d | 2007-02-14 A | 2007-03-13 A |  | 100% |  | 2007-02-14 | 2007-03-13 | 20d |  |  |  | 196h | 196h |
| 33 | 1.3.4.1.4.1 | **Client Session is singleton which is enforcing the CSM caGrid Integration project to use snychornization** | 13d | 2007-02-14 A | 2007-03-02 A |  | 100% |  | 2007-02-14 | 2007-03-02 | 13d |  |  |  | 40h | 40h |
| 34 | 1.3.4.1.4.1.1 | Design | 4d | 2007-02-14 A | 2007-02-19 A |  | 100% |  | 2007-02-14 | 2007-02-19 | 4d |  | start no earlier than 2007-02-14 | Kunal [50%] | 16h | 16h |
| 35 | 1.3.4.1.4.1.2 | Development | 3d | 2007-02-28 A | 2007-03-02 A | 40 | 100% |  | 2007-02-28 | 2007-03-02 | 3d |  |  | Kunal | 24h | 24h |
| 36 | 1.3.4.1.4.2 | **Upgrade the CSM/caGRID integration to use new functionality of CSM 3.2** | 10d | 2007-02-14 A | 2007-02-27 A |  | 100% |  | 2007-02-14 | 2007-02-27 | 10d |  |  |  | 76h | 76h |
| 37 | 1.3.4.1.4.2.1 | Design | 4d | 2007-02-14 A | 2007-02-19 A |  | 100% |  | 2007-02-14 | 2007-02-19 | 4d |  | start no earlier than 2007-02-14 | Kuanl [50%] | 16h | 16h |
| 38 | 1.3.4.1.4.2.2 | Design Review | 0.5d | 2007-02-20 A | 2007-02-20 A | 37 | 100% |  | 2007-02-20 | 2007-02-20 | 0.5d |  |  | caGRID; Satish; Avinash; Kunal | 16h | 16h |
| 39 | 1.3.4.1.4.2.3 | Design update | 0.5d | 2007-02-20 A | 2007-02-20 A | 38 | 100% |  | 2007-02-20 | 2007-02-20 | 0.5d |  |  | Kunal | 4h | 4h |
| 40 | 1.3.4.1.4.2.4 | Development | 5d | 2007-02-21 A | 2007-02-27 A | 39 | 100% |  | 2007-02-21 | 2007-02-27 | 5d |  |  | Kunal | 40h | 40h |
| 41 | 1.3.4.1.4.3 | **Seemless Security Integration** | 10d | 2007-02-28 A | 2007-03-13 A |  | 100% |  | 2007-02-28 | 2007-03-13 | 10d |  |  |  | 80h | 80h |
| 42 | 1.3.4.1.4.3.1 | Design | 2d | 2007-02-28 A | 2007-03-01 A | 40 | 100% |  | 2007-02-28 | 2007-03-01 | 2d |  |  | Kunal | 16h | 16h |
| 43 | 1.3.4.1.4.3.2 | **Development** | 6d | 2007-03-02 A | 2007-03-09 A |  | 100% |  | 2007-03-02 | 2007-03-09 | 6d |  |  |  | 48h | 48h |
| 44 | 1.3.4.1.4.3.2.1 | **Integration of new Installation Process into SDK** | 3d | 2007-03-02 A | 2007-03-06 A |  | 100% |  | 2007-03-02 | 2007-03-06 | 3d |  |  |  | 24h | 24h |
| 45 | 1.3.4.1.4.3.2.1.1 | Code | 3d | 2007-03-02 A | 2007-03-06 A |  | 100% |  | 2007-03-02 | 2007-03-06 | 3d |  | start no earlier than 2007-03-02 | Kunal | 24h | 24h |
| 46 | 1.3.4.1.4.3.2.2 | **Upgrade to CSM to Support Grid ability to leverage new CSM installation steps** | 3d | 2007-03-07 A | 2007-03-09 A |  | 100% |  | 2007-03-07 | 2007-03-09 | 3d |  |  |  | 24h | 24h |
| 47 | 1.3.4.1.4.3.2.2.1 | Code | 3d | 2007-03-07 A | 2007-03-09 A | 38 | 100% |  | 2007-03-07 | 2007-03-09 | 3d |  | start no earlier than 2007-03-07 | Kunal | 24h | 24h |
| 48 | 1.3.4.1.4.3.3 | **Documentation** | 2d | 2007-03-12 A | 2007-03-13 A |  | 100% |  | 2007-03-12 | 2007-03-13 | 2d |  |  |  | 16h | 16h |
| 49 | 1.3.4.1.4.3.3.1 | SDK Programmer's/Technical Guide | 2d | 2007-03-12 A | 2007-03-13 A | 46 | 100% |  | 2007-03-12 | 2007-03-13 | 2d |  |  | Kunal/Satish | 16h | 16h |
| 50 | 1.3.4.1.5 | **QA** | 9d | 2007-03-14 A | 2007-03-26 A |  | 100% |  | 2007-03-14 | 2007-03-26 | 9d |  |  | Kunal | 132.8h | 132.8h |
| 51 | 1.3.4.1.5.1 | Test Execution (In Sync With SDK Testing) | 5d | 2007-03-14 A | 2007-03-20 A |  | 100% |  | 2007-03-14 | 2007-03-20 | 5d |  | start no earlier than 2007-03-14 | QA | 40h | 40h |
| 52 | 1.3.4.1.5.2 | Test Support | 3d | 2007-03-14 A | 2007-03-16 A |  | 100% |  | 2007-03-14 | 2007-03-16 | 3d |  | start no earlier than 2007-03-14 | Kunal [20%] | 4.8h | 4.8h |
| 53 | 1.3.4.1.5.3 | Test Support | 2d | 2007-03-23 A | 2007-03-26 A |  | 100% |  | 2007-03-23 | 2007-03-26 | 2d |  | start no earlier than 2007-03-23 | Vijay | 16h | 16h |

| ID | WBS | Task | Duration | Start | Finish | Predecessors | Complete | Remaining | Baseline start | Baseline finish | Baseline duration | Total slack | Resources | Work | Actual work |
| --- | --- | --- | --- | --- | --- | --- | --- | --- | --- | --- | --- | --- | --- | --- | --- |
| 54 | 1.3.4.1.6 | **Iteration Plan** | 1d | 2007-03-27 A | 2007-03-27 A |  | 100% |  | 2007-03-27 | 2007-03-27 | 1d |  |  | 24h | 24h |
| 55 | 1.3.4.1.6.1 | Review Client Feature Request/Revise Task Plan | 1d | 2007-03-27 A | 2007-03-27 A | 50 | 100% |  | 2007-03-27 | 2007-03-27 | 1d |  | Charles; Avinash; Satish | 24h | 24h |
| 56 | 1.3.4.2 | **Iteration 2** | 74d | 2007-01-23 A | 2007-05-09 |  | 96% | 2.74d | 2007-01-23 | 2007-05-09 | 74d | 53d |  | 668h | 644h |
| 57 | 1.3.4.2.1 | **Release 4.0** | 74d | 2007-01-23 A | 2007-05-09 |  | 96% | 2.74d | 2007-01-23 | 2007-05-09 | 74d | 53d |  | 668h | 644h |
| 58 | 1.3.4.2.1.1 | Update Requirements Document | 5d | 2007-03-07 A | 2007-03-13 A | 55 | 100% |  | 2007-03-07 | 2007-03-13 | 5d |  | Charles [10%] | 4h | 4h |
| 59 | 1.3.4.2.1.2 | Assist BMS to Upgrade to CSM 3.2 to come on the same version to intiate co development | 3d | 2007-01-23 | 2007-01-25 |  |  |  | 2007-01-23 | 2007-01-25 | 3d | 124d | Kunal | 24h |  |
| 60 | 1.3.4.2.1.3 | Query optimization and corrections to queries | 6d | 2007-02-15 A | 2007-02-22 A | 31 | 100% |  | 2007-02-15 | 2007-02-22 | 6d |  | Vijay | 48h | 48h |
| 61 | 1.3.4.2.1.4 | Support Digital Certificates as credentials | 8d | 2007-02-23 A | 2007-03-06 A | 60 | 100% |  | 2007-02-23 | 2007-03-06 | 8d |  | Vijay | 64h | 64h |
| 62 | 1.3.4.2.1.5 | 21CFR Part 11 Support | 5d | 2007-03-07 A | 2007-03-13 A | 61 | 100% |  | 2007-03-07 | 2007-03-13 | 5d |  | Vijay | 40h | 40h |
| 63 | 1.3.4.2.1.6 | AuthenticationManager to correctly use the user provided lockout parameters | 1d | 2007-03-14 A | 2007-03-14 A | 62 | 100% |  | 2007-03-14 | 2007-03-14 | 1d |  | Vijay | 8h | 8h |
| 64 | 1.3.4.2.1.7 | UPT Fixes | 3d | 2007-03-15 A | 2007-03-19 A | 63 | 100% |  | 2007-03-15 | 2007-03-19 | 3d |  | Vijay | 24h | 24h |
| 65 | 1.3.4.2.1.8 | **Merge User Provisioning Manager & Authorization Manager Interfaces** | 3d | 2007-03-20 A | 2007-03-22 A | 64 | 100% |  | 2007-03-20 | 2007-03-22 | 3d |  |  | 24h | 24h |
| 66 | 1.3.4.2.1.8.1 | Design Update | 0.5d | 2007-03-20 A | 2007-03-20 A |  | 100% |  | 2007-03-20 | 2007-03-20 | 0.5d |  | Vijay | 4h | 4h |
| 67 | 1.3.4.2.1.8.2 | Code | 2.5d | 2007-03-20 A | 2007-03-22 A | 66 | 100% |  | 2007-03-20 | 2007-03-22 | 2.5d |  | Vijay | 20h | 20h |
| 68 | 1.3.4.2.1.9 | Uprade Tech Stack | 3d | 2007-03-27 A | 2007-03-29 A | 53 | 100% |  | 2007-03-27 | 2007-03-29 | 3d |  | Vijay | 24h | 24h |
| 69 | 1.3.4.2.1.10 | Support Postgres Database | 4d | 2007-03-30 A | 2007-04-04 A | 68 | 100% |  | 2007-03-30 | 2007-04-04 | 4d |  | Vijay | 32h | 32h |
| 70 | 1.3.4.2.1.11 | Merge 3.2.1 Code into 4.0 Head | 2d | 2007-04-05 A | 2007-04-06 A | 69 | 100% |  | 2007-04-05 | 2007-04-06 | 2d |  | Vijay | 16h | 16h |
| 71 | 1.3.4.2.1.12 | **QA** | 40d | 2007-03-14 A | 2007-05-08 A |  | 100% |  | 2007-03-14 | 2007-05-08 | 40d |  |  | 336h | 336h |
| 72 | 1.3.4.2.1.12.1 | Requirements Analysis | 5d | 2007-03-14 A | 2007-03-20 A | 58 | 100% |  | 2007-03-14 | 2007-03-20 | 5d |  | QA | 40h | 40h |
| 73 | 1.3.4.2.1.12.2 | Test Plan Development | 10d | 2007-04-02 A | 2007-04-13 A | 72, 87 | 100% |  | 2007-04-02 | 2007-04-13 | 10d |  | QA | 80h | 80h |
| 74 | 1.3.4.2.1.12.3 | Test Execution | 5d | 2007-04-16 A | 2007-04-20 A | 73 | 100% |  | 2007-04-16 | 2007-04-20 | 5d |  | QA | 40h | 40h |
| 75 | 1.3.4.2.1.12.4 | Test Plan Development | 5d | 2007-04-23 A | 2007-04-27 A | 74 | 100% |  | 2007-04-23 | 2007-04-27 | 5d |  | QA | 40h | 40h |
| 76 | 1.3.4.2.1.12.5 | Test Execution (Instance Level Security) | 7d | 2007-04-30 A | 2007-05-08 A | 75 | 100% |  | 2007-04-30 | 2007-05-08 | 7d |  | QA | 56h | 56h |
| 77 | 1.3.4.2.1.12.6 | Test Support | 5d | 2007-04-09 A | 2007-04-13 A | 70 | 100% |  | 2007-04-09 | 2007-04-13 | 5d |  | Vijay; Kunal | 80h | 80h |

| ID | WBS | Task | Type | Duration | Start | Finish | Predecessors | Complete | Remaining | Baseline start | Baseline finish | Baseline duration | Total slack | Free slack | Constraint | Resources | Work | Actual work |
| --- | --- | --- | --- | --- | --- | --- | --- | --- | --- | --- | --- | --- | --- | --- | --- | --- | --- | --- |
| 78 | 1.3.4.2.1.13 | **Iteration Plan** |  | 1d | 2007-05-09 A | 2007-05-09 A | 71 | 100% |  | 2007-05-09 | 2007-05-09 | 1d |  |  |  |  | 24h | 24h |
| 79 | 1.3.4.2.1.13.1 | Review Client Feature Request/Revise Task Plan |  | 1d | 2007-05-09 A | 2007-05-09 A |  | 100% |  | 2007-05-09 | 2007-05-09 | 1d |  |  |  | Charles; Avinash; Satish | 24h | 24h |
| 80 | 1.3.4.3 | **Iteration 3** |  | 86.5d | 2007-03-19 A | 2007-07-17 |  | 37% | 54.42d | 2007-03-19 | 2007-07-17 | 86.5d | 4.5d |  |  |  | 780h | 324h |
| 81 | 1.3.4.3.1 | **BioPharm 21 CFR Part 11 Validation** |  | 15.5d | 2007-05-04 A | 2007-05-25 |  | 33% | 10.33d | 2007-05-04 | 2007-05-25 | 15.5d | 4.5d | 0d |  |  | 120h | 40h |
| 82 | 1.3.4.3.1.1 | Receipt of Updated Documents by NCI/Ekagra | milestone | 0d | 2007-05-04 A | 2007-05-04 A |  | 100% |  | 2007-05-04 | 2007-05-04 | 0d |  |  | start no earlier than 2007-05-04 |  |  |  |
| 83 | 1.3.4.3.1.2 | Address document comments |  | 5d | 2007-05-04 A | 2007-05-11 A | 82, 91 | 100% |  | 2007-05-04 | 2007-05-11 | 5d |  |  |  | Kunal | 40h | 40h |
| 84 | 1.3.4.3.1.3 | Address issues documented in the Summary of Findings |  | 5d | 2007-05-11 | 2007-05-18 | 83 |  |  | 2007-05-11 | 2007-05-18 | 5d | 4.5d | 0d |  | Kunal | 40h |  |
| 85 | 1.3.4.3.1.4 | Address observations documented in the Gap Analysis |  | 5d | 2007-05-18 | 2007-05-25 | 84 |  |  | 2007-05-18 | 2007-05-25 | 5d | 4.5d |  |  | Kunal | 40h |  |
| 86 | 1.3.4.3.2 | **Instance Level Security Prototype** |  | 28d | 2007-03-19 A | 2007-04-25 A |  | 100% |  | 2007-03-19 | 2007-04-25 | 28d |  |  |  |  | 224h | 224h |
| 87 | 1.3.4.3.2.1 | Design |  | 10d | 2007-03-19 A | 2007-03-30 A | 52 | 100% |  | 2007-03-19 | 2007-03-30 | 10d |  |  | finish no earlier than 2007-03-30 | Kunal | 80h | 80h |
| 88 | 1.3.4.3.2.2 | Development |  | 18d | 2007-04-02 A | 2007-04-25 A | 87 | 100% |  | 2007-04-02 | 2007-04-25 | 18d |  |  |  | Kunal | 144h | 144h |
| 89 | 1.3.4.3.3 | Protoyp/Design Approved |  | 0.5d | 2007-04-26 A | 2007-04-26 A | 86 | 100% |  | 2007-04-26 | 2007-04-26 | 0.5d |  |  |  | Kunal; Avinash; Charles | 12h | 12h |
| 90 | 1.3.4.3.4 | **Instance Level Security** |  | 48d | 2007-04-26 A | 2007-07-03 |  | 18% | 39.27d | 2007-04-26 | 2007-07-03 | 48d | 4.5d | 0d |  |  | 264h | 48h |
| 91 | 1.3.4.3.4.1 | Load Testing |  | 6d | 2007-04-26 A | 2007-05-04 A | 89 | 100% |  | 2007-04-26 | 2007-05-04 | 6d |  |  |  | Kunal | 48h | 48h |
| 92 | 1.3.4.3.4.2 | **CSM/ UPT Changes** |  | 4d | 2007-05-25 | 2007-05-31 | 81 |  |  | 2007-05-25 | 2007-05-31 | 4d | 4.5d | 0d |  |  | 32h |  |
| 93 | 1.3.4.3.4.2.1 | Modification to API for new value field to Protection Element |  | 3d | 2007-05-25 | 2007-05-30 |  |  |  | 2007-05-25 | 2007-05-30 | 3d | 4.5d | 0d |  | Kunal | 24h |  |
| 94 | 1.3.4.3.4.2.2 | Changes to UPT Screen to Accept new value field |  | 1d | 2007-05-30 | 2007-05-31 | 93 |  |  | 2007-05-30 | 2007-05-31 | 1d | 4.5d |  |  | Kunal | 8h |  |
| 95 | 1.3.4.3.4.3 | **Provisioning Changes** |  | 10d | 2007-05-31 | 2007-06-14 | 92 |  |  | 2007-05-31 | 2007-06-14 | 10d | 4.5d | 0d |  |  | 80h |  |
| 96 | 1.3.4.3.4.3.1 | Details Database Design for Storing Security Info |  | 2d | 2007-05-31 | 2007-06-04 |  |  |  | 2007-05-31 | 2007-06-04 | 2d | 4.5d | 0d |  | Kunal | 16h |  |
| 97 | 1.3.4.3.4.3.2 | Adding a Interactive Screen to Map Security from Hibernate Information |  | 8d | 2007-06-04 | 2007-06-14 | 96 |  |  | 2007-06-04 | 2007-06-14 | 8d | 4.5d |  |  | Kunal | 64h |  |
| 98 | 1.3.4.3.4.4 | **SDK Changes** |  | 13d | 2007-06-14 | 2007-07-03 | 95 |  |  | 2007-06-14 | 2007-07-03 | 13d | 4.5d |  |  |  | 104h |  |
| 99 | 1.3.4.3.4.4.1 | Changes to add Filter info during HBM Generation |  | 5d | 2007-06-14 | 2007-06-21 |  |  |  | 2007-06-14 | 2007-06-21 | 5d | 4.5d | 0d |  | Kunal | 40h |  |
| 100 | 1.3.4.3.4.4.2 | Changes for Enabling Filter on Session |  | 5d | 2007-06-21 | 2007-06-28 | 99 |  |  | 2007-06-21 | 2007-06-28 | 5d | 4.5d | 0d |  | Kunal | 40h |  |
| 101 | 1.3.4.3.4.4.3 | Testing overall Changes |  | 3d | 2007-06-28 | 2007-07-03 | 100 |  |  | 2007-06-28 | 2007-07-03 | 3d | 4.5d |  |  | Kunal | 24h |  |

| ID | WBS | Task | Type | Duration | Start | Finish | Predecessors | Complete | Remaining | Baseline start | Baseline finish | Baseline duration | Total slack | Constraint | Resources | Work | Actual work |
| --- | --- | --- | --- | --- | --- | --- | --- | --- | --- | --- | --- | --- | --- | --- | --- | --- | --- |
| 102 | 1.3.4.3.5 | **QA** |  | 10d | 2007-07-03 | 2007-07-17 |  |  |  | 2007-07-03 | 2007-07-17 | 10d | 4.5d |  |  | 120h |  |
| 103 | 1.3.4.3.5.1 | Test Execution |  | 10d | 2007-07-03 | 2007-07-17 | 90 |  |  | 2007-07-03 | 2007-07-17 | 10d | 4.5d |  | QA | 80h |  |
| 104 | 1.3.4.3.5.2 | Test Support |  | 10d | 2007-07-03 | 2007-07-17 | 90 |  |  | 2007-07-03 | 2007-07-17 | 10d | 4.5d |  | Kunal [50%] | 40h |  |
| 105 | 1.3.4.3.6 | Documentation |  | 10d | 2007-07-03 | 2007-07-17 | 90 |  |  | 2007-07-03 | 2007-07-17 | 10d | 4.5d |  | Kunal [50%] | 40h |  |
| 106 | 1.3.4.4 | **Iteration 4** |  | 43d | 2007-04-30 A | 2007-06-27 |  | 38% | 26.46d | 2007-04-30 | 2007-06-27 | 43d | 18d |  |  | 104h | 40h |
| 107 | 1.3.4.4.1 | **ACEGI Integration** |  | 43d | 2007-04-30 A | 2007-06-27 |  | 38% | 26.46d | 2007-04-30 | 2007-06-27 | 43d | 18d |  |  | 104h | 40h |
| 108 | 1.3.4.4.1.1 | Design/Prototype |  | 5d | 2007-04-30 A | 2007-05-04 A |  | 100% |  | 2007-04-30 | 2007-05-04 | 5d |  | finish no earlier than 2007-05-04 | Vijay | 40h | 40h |
| 109 | 1.3.4.4.1.2 | Development |  | 8d | 2007-06-18 | 2007-06-27 |  |  |  | 2007-06-18 | 2007-06-27 | 8d | 18d | start no earlier than 2007-06-18 | Vijay | 64h |  |
| 110 | 1.3.7 | **Transition** |  | 25d | 2007-06-19 | 2007-07-23 |  |  |  | 2007-06-19 | 2007-07-23 | 25d | 0d |  |  | 400h |  |
| 111 | 1.3.5.1 | **Documentation** |  | 25d | 2007-06-19 | 2007-07-23 |  |  |  | 2007-06-19 | 2007-07-23 | 25d | 0d |  |  | 400h |  |
| 112 | 1.3.7.1.1 | New technical guide |  | 10d | 2007-06-19 | 2007-07-02 |  |  |  | 2007-06-19 | 2007-07-02 | 10d | 0d | start no earlier than 2007-06-19 | Vijay; Kunal | 160h |  |
| 113 | 1.3.7.1 | New users guide |  | 10d | 2007-07-03 | 2007-07-16 | 112 |  |  | 2007-07-03 | 2007-07-16 | 10d | 0d |  | Vijay; Kunal | 160h |  |
| 114 | 1.3.7.1.2 | How to example |  | 5d | 2007-07-17 | 2007-07-23 | 113 |  |  | 2007-07-17 | 2007-07-23 | 5d | 0d |  | Vijay; Kunal | 80h |  |
| 115 | 1.3.7.1.3 | 4.0 Release Complete | milestone | 0d | 2007-07-23 | 2007-07-23 | 111 |  |  | 2007-07-23 | 2007-07-23 | 0d | 0d |  |  |  |  |
