# CSM 3.2

Schedule from MS Project, 2006-04-20 to 2006-11-20, A marks actual dates.
NCI

## Calendars

- Standard: Mon-Fri 08:00-12:00, 13:00-17:00; Sat-Sun off. Exceptions (off unless hours are given): 2006-05-29.

## Resources

| Resource |
| --- |
| Charles |
| Avinash |
| Kunal |
| Orlando |
| Steven |
| Denise |
| BioPharm |
| Kuanl |
| Steve |

## Schedule

| ID | WBS | Task | Type | Duration | Start | Finish | Predecessors | Complete | Remaining | Total slack | Free slack | Constraint | Resources | Work | Actual work |
| --- | --- | --- | --- | --- | --- | --- | --- | --- | --- | --- | --- | --- | --- | --- | --- |
| 1 | 1 | **CSM 3.2** |  | 151d? | 2006-04-20 A | 2006-11-20 |  | 7% | 140.96d? | 0d |  |  |  | 2206.4h | 330.4h |
| 2 | 1.1 | **Elaboration** |  | 65.95d? | 2006-04-20 A | 2006-07-21 |  | 9% | 59.75d? | 85.05d |  |  |  | 1366.4h | 330.4h |
| 3 | 1.1.1 | **Iteration 1** |  | 34d? | 2006-04-20 A | 2006-06-07 |  | 21% | 26.86d? | 117d |  |  |  | 638.8h | 330.4h |
| 4 | 1.1 | Kick off | milestone | 0d | 2006-04-20 A | 2006-04-20 A |  | 100% |  |  |  | start no earlier than 2006-04-20 | Denise; Charles; Orlando; Steven; Avinash |  |  |
| 5 | 1.1.1.2 | **21 CFR Part 11** |  | 34d | 2006-04-20 A | 2006-06-07 |  | 35% | 22.1d | 117d |  |  |  | 205.6h | 173.6h |
| 6 | 1.1.1.2.1 | Preperation |  | 7d | 2006-04-20 A | 2006-04-28 A |  | 100% |  |  |  |  | Charles [10%]; Orlando; Steven; Kunal | 173.6h | 173.6h |
| 7 | 1.1.1.2.2 | Kickoff Meeting With Biopharm | milestone | 0d | 2006-05-01 A | 2006-05-01 A |  | 100% |  |  |  | start no earlier than 2006-05-01 | Charles [10%]; Orlando; Steven; Kunal |  |  |
| 8 | 1.1.1.2.3 | Biopharm resources allocated | milestone | 0d | 2006-05-15 | 2006-05-15 |  |  |  | 119d | 0d | start no earlier than 2006-05-15 | BioPharm |  |  |
| 9 | 1.1.1.2.4 | Deliver Materials |  | 3d | 2006-05-17 | 2006-05-19 | 8FS+2d |  |  | 119d | 0d |  | Steven | 24h |  |
| 10 | 1.1.1.2.5 | Provide Validation Support |  | 10d | 2006-05-22 | 2006-06-07 | 9 |  |  | 117d |  |  | Steven [10%] | 8h |  |
| 11 | 1.1.1.3 | **Project Scope** |  | 20d? | 2006-05-01 A | 2006-05-26 |  | 18% | 16.5d? | 124d |  |  |  | 382h | 156.8h |
| 12 | 1.1.1.3.1 | Create/Revise Candidate Requirements Document |  | 4d | 2006-05-01 A | 2006-05-04 A | 6 | 100% |  |  |  |  | Charles [10%]; Steven; Orlando; Kunal | 99.2h | 99.2h |
| 13 | 1.2 | Revised Scope w/Product Manager | milestone | 0d | 2006-05-04 A | 2006-05-04 A |  | 100% |  |  |  |  | Charles; Avinash |  |  |
| 14 | 1.1.1.3.3 | Define Elaboration Task Plan |  | 1d? | 2006-05-05 A | 2006-05-05 A | 12 | 100% |  |  |  |  | Charles [10%]; Orlando; Kunal; Steven | 24.8h | 24.8h |
| 15 | 1.1.1.3.4 | Create/Update Scope Document |  | 15d | 2006-05-08 | 2006-05-26 | 14 |  |  | 124d |  |  | Charles [10%] | 12h |  |
| 16 | 1.1.1.3.5 | Obtain Changes/Fixes from BMS and map to current scope |  | 4d | 2006-05-15 | 2006-05-18 |  |  |  | 119.5d | 0d | start no earlier than 2006-05-15 | Steven [90%] | 28.8h |  |
| 17 | 1.1.1.3.6 | **LOE/Requirements Gathering** |  | 14d | 2006-05-08 A | 2006-05-25 | 14 | 15% | 11.97d | 56.05d | 0d |  |  | 217.2h | 32.8h |
| 18 | 1.1.1.3.6.1 | Obtain exact JDK version for next release |  | 0.25d | 2006-05-08 | 2006-05-08 |  |  |  | 57.8d | 0d |  | Kunal | 2h |  |
| 19 | 1.1.1.3.6.2 | High Level Diagram of Grid-CSM Integration |  | 2d | 2006-05-08 A | 2006-05-10 A | 18 | 100% |  |  |  |  | Kunal | 16h | 16h |
| 20 | 1.1.1.3.6.3 | High Level Diagram of CSM Web Service |  | 1d | 2006-05-10 | 2006-05-11 | 19 |  |  | 57.8d | 0d |  | Kunal | 8h |  |
| 21 | 1.1.1.3.6.4 | Deliver Diagrams to Avinash | milestone | 0d | 2006-05-11 | 2006-05-11 | 20 |  |  | 57.8d | 0d |  | Kuanl |  |  |
| 22 | 1.1.1.3.6.5 | IMF Presentation |  | 2d | 2006-05-11 A | 2006-05-15 | 21 | 80% | 0.4d | 57.8d | 0d |  | Kunal | 16h | 12.8h |
| 23 | 1.1.1.3.6.6 | Estimate Tying User to Application |  | 1d | 2006-05-15 | 2006-05-16 | 22 |  |  | 57.8d | 0d |  | Kunal | 8h |  |
| 24 | 1.1.1.3.6.7 | Estimate for Grid Integration |  | 6d | 2006-05-16 | 2006-05-24 | 23 |  |  | 57.8d |  |  | Kunal | 48h |  |
| 25 | 1.1.1.3.6.8 | Meet with Apps for Performance Requirements |  | 0.25d | 2006-05-11 A | 2006-05-11 A |  | 100% |  |  |  | start no earlier than 2006-05-11 | Kunal; Orlando | 4h | 4h |
| 26 | 1.1.1.3.6.9 | Prototyp Generic LDAP |  | 2.5d | 2006-05-08 | 2006-05-10 |  |  |  | 57.05d | 0d |  | Orlando | 20h |  |
| 27 | 1.1.1.3.6.10 | Estimate Auth Policy Caching |  | 3d | 2006-05-10 | 2006-05-15 | 26 |  |  | 56.05d | 0d |  | Orlando | 24h |  |
| 28 | 1.1.1.3.6.11 | Estimate CLM Logging to text file and Log Viewer Mods |  | 2d | 2006-05-15 | 2006-05-17 | 27 |  |  | 56.05d | 0d |  | Orlando | 16h |  |
| 29 | 1.1.1.3.6.12 | Estimate BMS Webservice Integration |  | 2.5d | 2006-05-17 | 2006-05-19 | 28 |  |  | 56.05d | 0d |  | Orlando | 20h |  |
| 30 | 1.1.1.3.6.13 | Estimate BMS Integration Work |  | 4d | 2006-05-22 | 2006-05-25 | 29 |  |  | 56.05d |  |  | Orlando; Charles [10%] | 35.2h |  |
| 31 | 1.1.1.4 | NCICB Management Review Complete | milestone | 0d | 2006-05-17 | 2006-05-17 |  |  |  | 132d |  | start no earlier than 2006-05-17 |  |  |  |
| 32 | 1.1.1.5 | Update Scope |  | 2.95d | 2006-05-26 | 2006-05-31 | 17 |  |  | 56.05d | 0d |  | Charles [10%]; Orlando; Kunal | 49.6h |  |
| 33 | 1.1.1.6 | User Feedback Sessions Complete | milestone | 0d | 2006-05-26 | 2006-05-26 |  |  |  | 125d |  | start no earlier than 2006-05-26 |  |  |  |
| 34 | 1.1.1.7 | Final Scope Document Complete | milestone | 0d | 2006-05-29 | 2006-05-29 |  |  |  | 122d | 0d | start no earlier than 2006-05-29 |  |  |  |
| 35 | 1.1.1.8 | Revise Task Plan |  | 2d | 2006-05-30 | 2006-05-31 | 34 |  |  | 122d |  |  | Charles [10%] | 1.6h |  |

| ID | WBS | Task | Type | Duration | Start | Finish | Predecessors | Total slack | Free slack | Constraint | Resources | Work |
| --- | --- | --- | --- | --- | --- | --- | --- | --- | --- | --- | --- | --- |
| 36 | 1.1.2 | **Iteration 2** |  | 22.95d | 2006-05-19 | 2006-06-21 |  | 64d |  |  |  | 271.6h |
| 37 | 1.1.2.1 | **Detail Requirements** |  | 19.95d | 2006-05-19 | 2006-06-16 |  | 64d | 0d |  |  | 253.2h |
| 38 | 1.1.2.1.1 | **Define Use Cases** |  | 19.95d | 2006-05-19 | 2006-06-16 |  | 64d |  |  |  | 253.2h |
| 39 | 1.1.2.1.1.1 | **UPT** |  | 9.5d | 2006-05-19 | 2006-06-02 |  | 117.5d |  |  |  | 60.4h |
| 40 | 1.1.2.1.1.1.1 | Write |  | 5d | 2006-05-19 | 2006-05-25 | 16 | 119.5d | 0d |  | Steven | 40h |
| 41 | 1.1.2.1.1.1.2 | Review |  | 1d | 2006-05-26 | 2006-05-31 | 40 | 117.5d | 0d |  | Steven; Charles [10%] | 4.4h |
| 42 | 1.1.2.1.1.1.3 | Update per Review |  | 2d | 2006-05-31 | 2006-06-02 | 41 | 117.5d |  |  | Steven | 16h |
| 43 | 1.1.2.1.1.2 | **CLM** |  | 4d | 2006-05-31 | 2006-06-06 |  | 111.05d | 0d |  |  | 40.2h |
| 44 | 1.1.2.1.1.2.1 | Write |  | 3d | 2006-05-31 | 2006-06-05 | 32 | 111.05d | 0d |  | Orlando | 24h |
| 45 | 1.1.2.1.1.2.2 | Review |  | 0.25d | 2006-06-05 | 2006-06-06 | 44 | 111.05d | 0d |  | Orlando; Steve; Charles [10%] | 4.2h |
| 46 | 1.1.2.1.1.2.3 | Update per Review |  | 0.75d | 2006-06-06 | 2006-06-06 | 45 | 111.05d |  |  | Orlando; Steve | 12h |
| 47 | 1.1.2.1.1.3 | **Web Service** |  | 4d | 2006-05-31 | 2006-06-06 |  | 56.05d | 0d |  |  | 40.2h |
| 48 | 1.1.2.1.1.3.1 | Write |  | 3d | 2006-05-31 | 2006-06-05 | 32 | 56.05d | 0d |  | Kunal | 24h |
| 49 | 1.1.2.1.1.3.2 | Review |  | 0.25d | 2006-06-05 | 2006-06-06 | 48 | 56.05d | 0d |  | Kunal; Steve; Charles [10%] | 4.2h |
| 50 | 1.1.2.1.1.3.3 | Update per Review |  | 0.75d | 2006-06-06 | 2006-06-06 | 49 | 56.05d |  |  | Kunal; Steve | 12h |
| 51 | 1.1.2.1.1.4 | **CSM APIs** |  | 4d | 2006-06-06 | 2006-06-12 |  | 111.05d |  |  |  | 40.2h |
| 52 | 1.1.2.1.1.4.1 | Write |  | 3d | 2006-06-06 | 2006-06-09 | 43 | 111.05d | 0d |  | Orlando | 24h |
| 53 | 1.1.2.1.1.4.2 | Review |  | 0.25d | 2006-06-09 | 2006-06-12 | 52 | 111.05d | 0d |  | Orlando; Steve; Charles [10%] | 4.2h |
| 54 | 1.1.2.1.1.4.3 | Update per Review |  | 0.75d | 2006-06-12 | 2006-06-12 | 53 | 111.05d |  |  | Orlando; Steve | 12h |
| 55 | 1.1.2.1.1.5 | **Grid** |  | 8d | 2006-06-06 | 2006-06-16 |  | 56.05d | 0d |  |  | 72.2h |
| 56 | 1.1.2.1.1.5.1 | Write |  | 7d | 2006-06-06 | 2006-06-15 | 47 | 56.05d | 0d |  | Kunal | 56h |
| 57 | 1.1.2.1.1.5.2 | Review |  | 0.25d | 2006-06-15 | 2006-06-16 | 56 | 56.05d | 0d |  | Kunal; Steve; Charles [10%] | 4.2h |
| 58 | 1.1.2.1.1.5.3 | Update per Review |  | 0.75d | 2006-06-16 | 2006-06-16 | 57 | 56.05d | 0d |  | Kunal; Steve | 12h |
| 59 | 1.1.2.2 | General Requirements Phase Complete | milestone | 0d | 2006-06-07 | 2006-06-07 |  | 118d |  | start no earlier than 2006-06-07 |  |  |
| 60 | 1.1.2.3 | Revise Scope Document |  | 1d | 2006-06-16 | 2006-06-19 | 37 | 107.05d | 0d |  | Charles [10%] | 0.8h |
| 61 | 1.1.2.4 | Revised Scope Document Complete | milestone | 0d | 2006-06-08 | 2006-06-08 |  | 117d |  | start no earlier than 2006-06-08 |  |  |
| 62 | 1.1.2.5 | Update CSM Model |  | 2d | 2006-06-16 | 2006-06-20 | 37 | 108.05d |  |  | Orlando | 16h |
| 63 | 1.1.2.6 | UML Model Changes Approved | milestone | 0d | 2006-06-09 | 2006-06-09 |  | 93d | 0d | start no earlier than 2006-06-09 | Orlando |  |
| 64 | 1.1.2.7 | Revise Task Plan |  | 2d | 2006-06-19 | 2006-06-21 | 60 | 107.05d |  |  | Charles [10%] | 1.6h |
| 65 | 1.1.2.8 | Project Manager Project Plan Complete | milestone | 0d | 2006-06-12 | 2006-06-12 |  | 115d |  | start no earlier than 2006-06-12 |  |  |
| 66 | 1.1.2.9 | Product Manager Project Plan Complete | milestone | 0d | 2006-06-14 | 2006-06-14 |  | 113d |  | start no earlier than 2006-06-14 |  |  |
| 67 | 1.1.2.10 | caCore Project Plan Complete | milestone | 0d | 2006-06-21 | 2006-06-21 |  | 108d |  | start no earlier than 2006-06-21 |  |  |

| ID | WBS | Task | Type | Duration | Start | Finish | Predecessors | Total slack | Free slack | Constraint | Resources | Work |
| --- | --- | --- | --- | --- | --- | --- | --- | --- | --- | --- | --- | --- |
| 68 | 1.1.3 | **Iteration 3** |  | 30.95d | 2006-06-09 | 2006-07-21 |  | 62d |  |  |  | 456h |
| 69 | 1.1.3.1 | Review Testability of Requirements |  | 4d | 2006-06-16 | 2006-06-22 | 58 | 56.05d | 0d |  | Steven | 32h |
| 70 | 1.1.3.2 | Test Plan Development |  | 15d | 2006-06-22 | 2006-07-21 | 69 | 50.05d | 0d |  | Steven | 120h |
| 71 | 1.1.3.3 | **Prototype** |  | 18.95d | 2006-06-09 | 2006-07-05 |  | 92.05d |  |  |  | 184h |
| 72 | 1.1.3.3.1 | Grid |  | 13d | 2006-06-16 | 2006-07-05 | 55 | 92.05d | 0d |  | Kunal | 104h |
| 73 | 1.1.3.3.2 | Open/Active Directory LDAP |  | 5d | 2006-06-09 | 2006-06-15 | 63 | 93d | 0d |  | Orlando | 40h |
| 74 | 1.1.3.3.3 | CLM Text File Viewer |  | 5d | 2006-06-16 | 2006-06-22 | 73 | 93d | 0d |  | Orlando | 40h |
| 75 | 1.1.3.4 | Grid Design Docs |  | 5d | 2006-07-05 | 2006-07-12 | 72 | 92.05d |  |  | Kunal | 40h |
| 76 | 1.1.3.5 | CSM & CLM Design docs |  | 7d | 2006-06-23 | 2006-07-03 | 74 | 93d | 0d |  | Orlando | 56h |
| 77 | 1.1.3.6 | CSM SAD |  | 3d | 2006-07-04 | 2006-07-06 | 76 | 93d | 0d |  | Orlando | 24h |
| 78 | 1.1.3.7 | Design Reviews |  | 3d | 2006-07-07 | 2006-07-11 | 77 | 93d |  |  |  |  |
| 79 | 1.1.3.8 | Design Documents Posted/Review Completed | milestone | 0d | 2006-07-11 | 2006-07-11 |  | 59d | 0d | start no earlier than 2006-07-11 |  |  |
| 80 | 1.2 | **Construction** |  | 76d | 2006-07-11 | 2006-10-25 |  | 18d |  |  |  | 840h |
| 81 | 1.2.1 | Development/Test |  | 35d | 2006-07-11 | 2006-08-28 | 79 | 59d |  |  | Kunal; Orlando | 560h |
| 82 | 1.2.2 | Load and Regresstion Test Development/Testing |  | 35d | 2006-07-21 | 2006-09-08 | 70 | 50.05d |  |  | Steven | 280h |
| 83 | 1.2.3 | Code/Unit Test Complete | milestone | 0d | 2006-08-28 | 2006-08-28 |  | 60d |  | start no earlier than 2006-08-28 |  |  |
| 84 | 1.2.4 | QA Cycling/Integration Testing Complete (Dev) | milestone | 0d | 2006-09-11 | 2006-09-11 |  | 50d |  | start no earlier than 2006-09-11 |  |  |
| 85 | 1.2.5 | QA Cycling/Integration Testing Complete (QA) | milestone | 0d | 2006-09-26 | 2006-09-26 |  | 39d |  | start no earlier than 2006-09-26 |  |  |
| 86 | 1.2.6 | Internal System Testing Complete (QA Tier) | milestone | 0d | 2006-10-16 | 2006-10-16 |  | 25d |  | start no earlier than 2006-10-16 |  |  |
| 87 | 1.2.7 | Release Candidate pushed to Staget Tier | milestone | 0d | 2006-10-17 | 2006-10-17 |  | 24d |  | start no earlier than 2006-10-17 |  |  |
| 88 | 1.2.8 | UAT Complete (Stage Tier) | milestone | 0d | 2006-10-25 | 2006-10-25 |  | 18d |  | start no earlier than 2006-10-25 |  |  |
| 89 | 1.3 | **Transition** |  | 7d | 2006-11-09 | 2006-11-20 |  | 0d |  |  |  |  |
| 90 | 1.3.1 | Final Release Ready | milestone | 0d | 2006-11-09 | 2006-11-09 |  | 7d |  | start no earlier than 2006-11-09 |  |  |
| 91 | 1.3.2 | Internal Staging Regression Testing Complete | milestone | 0d | 2006-11-17 | 2006-11-17 |  | 1d |  | start no earlier than 2006-11-17 |  |  |
| 92 | 1.3.3 | Final Release | milestone | 0d | 2006-11-20 | 2006-11-20 |  | 0d |  | start no earlier than 2006-11-20 |  |  |
